How a schedule from MS Project changed from version to version. A marks actual dates.

## Version 1 (saved 2017-10-22, file 小组任务进度表.mpp)

Note of the change: project on planning

| ID | WBS | Task | Duration | Start | Finish | Predecessors |
| --- | --- | --- | --- | --- | --- | --- |
| 1 | 1 | **启动** | 11d | 2017-09-27 | 2017-10-11 |  |
| 2 |  | 讨论项目内容与简介 | 1d | 2017-09-28 | 2017-09-28 |  |
| 3 |  | 软件安装 | 2d | 2017-09-29 | 2017-10-02 |  |
| 4 |  | 完成项目计划简介 | 1d | 2017-09-29 | 2017-09-29 | 2 |
| 5 |  | 预先学习 | 3d | 2017-09-29 | 2017-10-03 |  |
| 6 |  | 项目介绍以及PPT | 0d | 2017-09-27 | 2017-09-27 |  |
| 7 | 2 | **问题定义** | 11d | 2017-10-11 | 2017-10-25 | 1 |
| 8 | 2.1 | **项目计划拟定** | 6d | 2017-10-11 | 2017-10-18 | 1 |
| 9 |  | 寻找项目计划模版与后续模版 | 1d | 2017-10-12 | 2017-10-12 |  |
| 10 |  | 预先绘制甘特图 | 1d | 2017-10-11 | 2017-10-11 |  |
| 11 |  | 完成项目计划引言和概述 | 1d | 2017-10-13 | 2017-10-13 | 9 |
| 12 |  | 完成项目计划实施与支持条件 | 1d | 2017-10-13 | 2017-10-13 | 9 |
| 13 |  | 项目计划初稿整体修订 | 1d | 2017-10-16 | 2017-10-16 | 11, 12 |
| 14 |  | 项目计划初稿以及PPT | 0d | 2017-10-11 | 2017-10-11 |  |
| 15 | 2.2 | **项目计划修订** | 6d | 2017-10-18 | 2017-10-25 | 8 |
| 16 |  | 甘特图修订 | 4d | 2017-10-12 | 2017-10-17 | 10 |
| 17 |  | 组织分解结构与工作分解结构拟定（OBS,WBS） | 4d | 2017-10-18 | 2017-10-22 |  |
| 18 |  | 项目计划修订 | 6d | 2017-10-16 | 2017-10-23 | 13 |
| 19 |  | 项目logo设计 | 6d | 2017-10-16 | 2017-10-23 | 13 |
| 20 |  | 项目计划修订稿以及PPT | 0d | 2017-10-18 | 2017-10-18 |  |
| 21 | 3 | **可行性研究** | 11d | 2017-10-18 | 2017-11-01 | 15 |
| 22 | 3.1 | **可行性分析报告初稿** | 6d | 2017-10-18 | 2017-10-25 | 13 |
| 23 |  | 提前预习与提前教学可行性分析 | 1d | 2017-10-21 | 2017-10-21 |  |
| 24 |  | 操作可行性分析 | 2d | 2017-10-23 | 2017-10-24 | 23 |
| 25 |  | 技术可行性分析 | 2d | 2017-10-23 | 2017-10-24 | 23 |
| 26 |  | 经济可行性分析 | 2d | 2017-10-23 | 2017-10-24 | 23 |
| 27 |  | 可行性分析报告初稿 | 0d | 2017-10-18 | 2017-10-18 |  |
| 28 | 3.2 | **可行性分析报告修订** | 6d | 2017-10-25 | 2017-11-01 | 22 |
| 29 |  | 操作可行性分析报告更改 | 4d | 2017-10-25 | 2017-10-30 | 24 |
| 30 |  | 技术可行性分析报告更改 | 4d | 2017-10-25 | 2017-10-30 | 25 |
| 31 |  | 经济可行性分析报告更改 | 4d | 2017-10-25 | 2017-10-30 | 26 |
| 32 |  | 可行性分析报告修订稿 | 0d | 2017-10-25 | 2017-10-25 |  |
| 33 | 4 | **需求分析** | 11d | 2017-11-01 | 2017-11-15 | 21 |
| 34 |  | 需求说明SRS | 6d | 2017-11-02 | 2017-11-09 | 28 |
| 35 |  | SRS修订 | 5d | 2017-11-02 | 2017-11-08 | 28 |
| 36 |  | SRS修订文档 | 0d | 2017-11-01 | 2017-11-01 |  |
| 37 | 5 | **总体设计** | 16d | 2017-11-15 | 2017-12-06 | 33 |
| 38 |  | 总体设计报告 | 6d | 2017-11-15 | 2017-11-22 |  |
| 39 |  | 总体设计报告修订 | 3d | 2017-12-01 | 2017-12-05 |  |
| 40 |  | 总体设计报告 | 0d | 2017-11-15 | 2017-11-15 |  |
| 41 | 6 | **详细设计** | 16d | 2017-11-15 | 2017-12-06 | 37 |
| 42 | 6.1 | **详细设计报告** | 6d | 2017-11-23 | 2017-11-30 | 38 |
| 43 |  | 数据库设计 | 6d | 2017-11-23 | 2017-11-30 |  |
| 44 |  | 子系统设计 | 6d | 2017-11-23 | 2017-11-30 |  |
| 45 |  | 界面设计 | 6d | 2017-11-23 | 2017-11-30 |  |
| 46 |  | 详细设计报告修订 | 3d | 2017-12-07 | 2017-12-11 | 41 |
| 47 |  | 总体设计报告，详细设计报告以及PPT | 0d | 2017-09-27 | 2017-09-27 |  |
| 48 | 9 | **编码测试** | 16d | 2017-12-06 | 2017-12-27 | 41 |
| 49 |  | 学习更深层次的前端技术 | 3d | 2017-11-23 | 2017-11-27 |  |
| 50 |  | 开始学习Ajax/Boostrap | 5d | 2017-11-29 | 2017-12-05 | 49 |
| 51 | 9.3 | **可访问浏览获取信息及代码清单测试用例** | 7d | 2017-12-06 | 2017-12-14 |  |
| 52 |  | 完成平台搭建及后台部署 | 5d | 2017-12-06 | 2017-12-12 |  |
| 53 |  | 代码清单以及测试用例 | 7d | 2017-12-06 | 2017-12-14 |  |
| 54 |  | 能够正常访问及获取相关商品信息 | 2d | 2017-12-13 | 2017-12-14 | 52 |
| 55 |  | 代码清单+测试用例 | 0d | 2017-12-06 | 2017-12-06 |  |
| 56 | 9.4 | **用户(会员)登录注册** | 7d | 2017-12-14 | 2017-12-22 |  |
| 57 |  | 基本注册 | 2d | 2017-12-14 | 2017-12-15 |  |
| 58 |  | 基本登录 | 2d | 2017-12-18 | 2017-12-19 | 57 |
| 59 |  | 登录状态监测 | 1d | 2017-12-20 | 2017-12-20 | 58 |
| 60 |  | 系统测试报告 | 7d | 2017-12-14 | 2017-12-22 |  |
| 61 |  | 系统测试报告 | 0d | 2017-12-14 | 2017-12-14 |  |
| 62 | 9.5 | **客户留言及咨询** | 4d | 2017-12-23 | 2017-12-27 |  |
| 63 |  | 留言操作 | 1d | 2017-12-23 | 2017-12-23 |  |
| 64 |  | 与账户子系统连接 | 2d | 2017-12-24 | 2017-12-25 |  |
| 65 |  | 测试报告修订 | 0d | 2017-12-23 | 2017-12-23 |  |
| 66 | 9.6 | **测试** | 16d | 2017-12-06 | 2017-12-27 |  |
| 67 |  | 子系统测试 | 1d? | 2017-12-06 | 2017-12-06 |  |
| 68 |  | 系统测试 | 3d | 2017-12-07 | 2017-12-11 | 67 |
| 69 |  | 验收测试 | 5d | 2017-12-12 | 2017-12-16 | 68 |
| 70 |  | 平行测试 | 4d | 2017-12-18 | 2017-12-21 | 69 |

| ID | WBS | Task | Duration | Start | Finish | Predecessors |
| --- | --- | --- | --- | --- | --- | --- |
| 71 | 10 | **维护** | 8d | 2017-12-27 | 2018-01-05 | 48 |
| 72 |  | 功能该进 | 4d | 2017-12-27 | 2018-01-01 |  |
| 73 |  | 功能修正 | 4d | 2018-01-01 | 2018-01-04 |  |
| 74 |  | 项目总结报告，总评审PPT | 0d | 2017-12-27 | 2017-12-27 |  |

## Version 2 (saved 2017-10-29, file 小组任务进度表_v0.1.mpp)

Note of the change: BIG MODEFIED oct 31 TUE

Last finish stays 2018-01-05. Complete tasks 0 → 25.

Changed:

| ID | Task | Start | Finish | Complete |
| --- | --- | --- | --- | --- |
| 1 | **启动** | 2017-09-27 A |  | 0% → 100% |
| 2 | 讨论项目内容与简介 | 2017-09-28 A | 2017-09-28 A | 0% → 100% |
| 3 | 软件安装 | 2017-09-29 A | 2017-10-02 A | 0% → 100% |
| 4 | 完成项目计划简介 | 2017-09-29 A | 2017-09-29 A | 0% → 100% |
| 5 | 预先学习 | 2017-09-29 A | 2017-10-03 A | 0% → 100% |
| 6 | 项目介绍以及PPT | 2017-09-27 A | 2017-09-27 A | 0% → 100% |
| 7 | **问题定义** | 2017-10-11 A |  | 0% → 100% |
| 8 | **项目计划拟定** | 2017-10-11 A |  | 0% → 100% |
| 9 | 寻找项目计划模版与后续模版 | 2017-10-12 A | 2017-10-12 A | 0% → 100% |
| 10 | 预先绘制甘特图 | 2017-10-11 A | 2017-10-11 A | 0% → 100% |
| 11 | 完成项目计划引言和概述 | 2017-10-13 A | 2017-10-13 A | 0% → 100% |
| 12 | 完成项目计划实施与支持条件 | 2017-10-13 A | 2017-10-13 A | 0% → 100% |
| 13 | 项目计划初稿整体修订 | 2017-10-16 A | 2017-10-16 A | 0% → 100% |
| 14 | 项目计划初稿以及PPT | 2017-10-11 A | 2017-10-11 A | 0% → 100% |
| 15 | **项目计划修订** |  |  | 0% → 100% |
| 16 | 甘特图修订 | 2017-10-12 A | 2017-10-17 A | 0% → 100% |
| 17 | 组织分解结构与工作分解结构拟定（OBS,WBS） | 2017-10-18 A | 2017-10-22 A | 0% → 100% |
| 18 | 项目计划修订 | 2017-10-16 A | 2017-10-23 A | 0% → 100% |
| 19 | 项目logo设计 | 2017-10-16 A | 2017-10-23 A | 0% → 100% |
| 20 | 项目计划修订稿以及PPT | 2017-10-18 A | 2017-10-18 A | 0% → 100% |
| 21 | **可行性研究** | 2017-10-18 A |  | 0% → 100% |
| 22 | **可行性分析报告初稿** | 2017-10-18 A |  | 0% → 100% |
| 23 | 提前预习与提前教学可行性分析 | 2017-10-21 A | 2017-10-21 A | 0% → 100% |
| 24 | 操作可行性分析 | 2017-10-23 A | 2017-10-24 A | 0% → 100% |
| 25 | 技术可行性分析 | 2017-10-23 A | 2017-10-24 A | 0% → 100% |
| 26 | 经济可行性分析 | 2017-10-23 A | 2017-10-24 A | 0% → 100% |
| 27 | 可行性分析报告初稿 | 2017-10-18 A | 2017-10-18 A | 0% → 100% |
| 28 | **可行性分析报告修订** | 2017-10-25 A |  | 0% → 100% |
| 29 | 操作可行性分析报告更改 | 2017-10-25 A | 2017-10-30 A | 0% → 100% |
| 30 | 技术可行性分析报告更改 | 2017-10-25 A | 2017-10-30 A | 0% → 100% |
| 31 | 经济可行性分析报告更改 | 2017-10-25 A | 2017-10-30 A | 0% → 100% |
| 32 | 可行性分析报告修订稿 | 2017-10-25 A | 2017-10-25 A | 0% → 100% |

## Version 3 (saved 2017-10-31, file 小组任务进度表_修订版.mpp)

Note of the change: info

Last finish 2018-01-05 → 2018-03-31 (+85d). Complete tasks 25 → 17.

Changed:

| ID | Task | Start | Finish | Duration | Complete |
| --- | --- | --- | --- | --- | --- |
| 1 | **启动** |  |  | 11d → 88d |  |
| 2 | 讨论项目内容与简介 |  |  | 1d → 8d |  |
| 3 | 软件安装 |  |  | 2d → 16d |  |
| 4 | 完成项目计划简介 |  |  | 1d → 8d |  |
| 5 | 预先学习 |  |  | 3d → 24d |  |
| 7 | **问题定义** |  |  | 11d → 88d |  |
| 8 | **项目计划拟定** |  |  | 6d → 48d |  |
| 9 | 寻找项目计划模版与后续模版 |  |  | 1d → 8d |  |
| 10 | 预先绘制甘特图 |  |  | 1d → 8d |  |
| 11 | 完成项目计划引言和概述 |  |  | 1d → 8d |  |
| 12 | 完成项目计划实施与支持条件 |  |  | 1d → 8d |  |
| 13 | 项目计划初稿整体修订 |  |  | 1d → 8d |  |
| 15 | **项目计划修订** |  |  | 6d → 48d |  |
| 16 | 甘特图修订 |  |  | 4d → 32d |  |
| 17 | 组织分解结构与工作分解结构拟定（OBS,WBS） |  |  | 4d → 32d |  |
| 18 | 项目计划修订 |  |  | 6d → 48d |  |
| 19 | 项目logo设计 |  |  | 6d → 48d |  |
| 21 | **可行性研究** |  |  | 11d → 88d | 100% → 6% |
| 22 | **可行性分析报告初稿** |  |  | 6d → 48d | 100% → 20% |
| 23 | 提前预习与提前教学可行性分析 |  |  | 1d → 8d |  |
| 24 | 操作可行性分析 | 2017-10-23 A → 2017-10-23 | 2017-10-24 A → 2017-10-24 | 2d → 11d | 100% → 0% |
| 25 | 技术可行性分析 | 2017-10-23 A → 2017-10-23 | 2017-10-24 A → 2017-10-24 | 2d → 11d | 100% → 0% |
| 26 | 经济可行性分析 | 2017-10-23 A → 2017-10-23 | 2017-10-24 A → 2017-10-24 | 2d → 11d | 100% → 0% |
| 27 | 可行性分析报告初稿 | 2017-10-18 A → 2017-10-18 | 2017-10-18 A → 2017-10-18 |  | 100% → 0% |
| 28 | **可行性分析报告修订** | 2017-10-25 A → 2017-10-25 |  | 6d → 48d | 100% → 0% |
| 29 | 操作可行性分析报告更改 | 2017-10-25 A → 2017-10-25 | 2017-10-30 A → 2017-10-30 | 4d → 30d | 100% → 0% |
| 30 | 技术可行性分析报告更改 | 2017-10-25 A → 2017-10-25 | 2017-10-30 A → 2017-10-30 | 4d → 28d | 100% → 0% |
| 31 | 经济可行性分析报告更改 | 2017-10-25 A → 2017-10-25 | 2017-10-30 A → 2017-10-30 | 4d → 30d | 100% → 0% |
| 32 | 可行性分析报告修订稿 | 2017-10-25 A → 2017-10-25 | 2017-10-25 A → 2017-10-25 |  | 100% → 0% |
| 33 | **需求分析** |  |  | 11d → 88d |  |
| 34 | 需求说明SRS |  | 2017-11-09 → 2017-12-07 (+28d) | 6d → 212d |  |
| 35 | SRS修订 |  | 2017-11-08 → 2017-11-29 (+21d) | 5d → 164d |  |
| 37 | **总体设计** |  |  | 16d → 128d |  |
| 38 | 总体设计报告 |  | 2017-11-22 → 2017-12-20 (+28d) | 6d → 212d |  |
| 39 | 总体设计报告修订 |  |  | 3d → 16d |  |
| 41 | **详细设计** |  |  | 16d → 128d |  |
| 42 | **详细设计报告** |  | 2017-11-30 → 2017-12-28 (+28d) | 6d → 212d |  |
| 43 | 数据库设计 |  | 2017-11-30 → 2017-12-28 (+28d) | 6d → 212d |  |
| 44 | 子系统设计 |  | 2017-11-30 → 2017-12-20 (+20d) | 6d → 164d |  |
| 45 | 界面设计 |  | 2017-11-30 → 2017-12-28 (+28d) | 6d → 212d |  |
| 46 | 详细设计报告修订 |  |  | 3d → 16d |  |
| 48 | **编码测试** |  |  | 16d → 128d |  |
| 49 | 学习更深层次的前端技术 |  |  | 3d → 16d |  |
| 50 | 开始学习Ajax/Boostrap |  | 2017-12-05 → 2017-12-26 (+21d) | 5d → 164d |  |
| 51 | **可访问浏览获取信息及代码清单测试用例** |  | 2017-12-14 → 2018-01-18 (+35d) | 7d → 260d |  |
| 52 | 完成平台搭建及后台部署 |  | 2017-12-12 → 2017-12-27 (+15d) | 5d → 132d |  |
| 53 | 代码清单以及测试用例 |  | 2017-12-14 → 2018-01-18 (+35d) | 7d → 260d |  |
| 54 | 能够正常访问及获取相关商品信息 |  |  | 2d → 11d |  |
| 56 | **用户(会员)登录注册** |  |  | 7d → 56d |  |
| 57 | 基本注册 |  |  | 2d → 11d |  |
| 58 | 基本登录 |  |  | 2d → 11d |  |
| 59 | 登录状态监测 |  |  | 1d → 7d |  |
| 60 | 系统测试报告 |  | 2017-12-22 → 2018-01-26 (+35d) | 7d → 260d |  |
| 62 | **客户留言及咨询** |  | 2017-12-27 → 2018-01-15 (+19d) | 4d → 140d |  |
| 63 | 留言操作 |  |  | 1d → 8d |  |
| 64 | 与账户子系统连接 |  |  | 2d → 16d |  |
| 66 | **测试** |  | 2017-12-27 → 2018-03-31 (+94d) | 16d → 677d |  |
| 67 | 子系统测试 |  |  | 1d? → 8d? |  |
| 68 | 系统测试 |  |  | 3d → 24d |  |
| 69 | 验收测试 |  |  | 5d → 40d |  |
| 70 | 平行测试 |  |  | 4d → 32d |  |
| 71 | **维护** |  |  | 8d → 64d |  |
| 72 | 功能该进 |  |  | 4d → 30d |  |
| 73 | 功能修正 |  |  | 4d → 32d |  |

## Version 4 (saved 2017-11-03, file 小组任务进度表_v0.1.mpp)

Last finish 2018-03-31 → 2018-01-05 (-85d). Complete tasks 17 → 25.

Added:

| ID | Task | Duration | Start | Finish | Predecessors | Resources |
| --- | --- | --- | --- | --- | --- | --- |
| 34 | 更新项目计划，可行性分析 | 2d | 2017-10-26 | 2017-10-27 | 22 | 陈董锴; 吕莉; 吴安之 |
| 35 | 熟悉Python网页开发框架 | 3d | 2017-11-03 | 2017-11-07 |  | 陈董锴 |
| 36 | 按新的构建再次改进原型 | 2d | 2017-11-01 | 2017-11-02 |  | 吴安之 |

Changed:

| ID | Task | Start | Finish | Duration | Complete |
| --- | --- | --- | --- | --- | --- |
| 1 | **启动** |  |  | 88d → 11d |  |
| 2 | 讨论项目内容与简介 |  |  | 8d → 1d |  |
| 3 | 软件安装 |  |  | 16d → 2d |  |
| 4 | 完成项目计划简介 |  |  | 8d → 1d |  |
| 5 | 预先学习 |  |  | 24d → 3d |  |
| 7 | **问题定义** |  |  | 88d → 11d |  |
| 8 | **项目计划拟定** |  |  | 48d → 6d |  |
| 9 | 寻找项目计划模版与后续模版 |  |  | 8d → 1d |  |
| 10 | 预先绘制甘特图 |  |  | 8d → 1d |  |
| 11 | 完成项目计划引言和概述 |  |  | 8d → 1d |  |
| 12 | 完成项目计划实施与支持条件 |  |  | 8d → 1d |  |
| 13 | 项目计划初稿整体修订 |  |  | 8d → 1d |  |
| 15 | **项目计划修订** |  |  | 48d → 6d |  |
| 16 | 甘特图修订 |  |  | 32d → 4d |  |
| 17 | 组织分解结构与工作分解结构拟定（OBS,WBS） |  |  | 32d → 4d |  |
| 18 | 项目计划修订 |  |  | 48d → 6d |  |
| 19 | 项目logo设计 |  |  | 48d → 6d |  |
| 21 | **可行性研究** |  |  | 88d → 11d | 6% → 100% |
| 22 | **可行性分析报告初稿** |  |  | 48d → 6d | 20% → 100% |
| 23 | 提前预习与提前教学可行性分析 |  |  | 8d → 1d |  |
| 24 | 操作可行性分析 | 2017-10-23 A | 2017-10-24 A | 11d → 2d | 0% → 100% |
| 25 | 技术可行性分析 | 2017-10-23 A | 2017-10-24 A | 11d → 2d | 0% → 100% |
| 26 | 经济可行性分析 | 2017-10-23 A | 2017-10-24 A | 11d → 2d | 0% → 100% |
| 27 | 可行性分析报告初稿 | 2017-10-18 A | 2017-10-18 A |  | 0% → 100% |
| 28 | **可行性分析报告修订** | 2017-10-25 A |  | 48d → 6d | 0% → 100% |
| 29 | 操作可行性分析报告更改 | 2017-10-25 A | 2017-10-30 A | 30d → 4d | 0% → 100% |
| 30 | 技术可行性分析报告更改 | 2017-10-25 A | 2017-10-30 A | 28d → 4d | 0% → 100% |
| 31 | 经济可行性分析报告更改 | 2017-10-25 A | 2017-10-30 A | 30d → 4d | 0% → 100% |
| 32 | 可行性分析报告修订稿 | 2017-10-25 A | 2017-10-25 A |  | 0% → 100% |
| 33 | **需求分析** |  |  | 88d → 11d |  |
| 37 | 需求说明SRS |  | 2017-12-07 → 2017-11-09 (-28d) | 212d → 6d |  |
| 38 | SRS修订 |  | 2017-11-29 → 2017-11-08 (-21d) | 164d → 5d |  |
| 40 | **总体设计** |  |  | 128d → 16d |  |
| 41 | 总体设计报告 |  | 2017-12-20 → 2017-11-22 (-28d) | 212d → 6d |  |
| 42 | 总体设计报告修订 |  |  | 16d → 3d |  |
| 44 | **详细设计** |  |  | 128d → 16d |  |
| 45 | **详细设计报告** |  | 2017-12-28 → 2017-11-30 (-28d) | 212d → 6d |  |
| 46 | 数据库设计 |  | 2017-12-28 → 2017-11-30 (-28d) | 212d → 6d |  |
| 47 | 子系统设计 |  | 2017-12-20 → 2017-11-30 (-20d) | 164d → 6d |  |
| 48 | 界面设计 |  | 2017-12-28 → 2017-11-30 (-28d) | 212d → 6d |  |
| 49 | 详细设计报告修订 |  |  | 16d → 3d |  |
| 51 | **编码测试** |  |  | 128d → 16d |  |
| 52 | 学习更深层次的前端技术 |  |  | 16d → 3d |  |
| 53 | 开始学习Ajax/Boostrap |  | 2017-12-26 → 2017-12-05 (-21d) | 164d → 5d |  |
| 54 | **可访问浏览获取信息及代码清单测试用例** |  | 2018-01-18 → 2017-12-14 (-35d) | 260d → 7d |  |
| 55 | 完成平台搭建及后台部署 |  | 2017-12-27 → 2017-12-12 (-15d) | 132d → 5d |  |
| 56 | 代码清单以及测试用例 |  | 2018-01-18 → 2017-12-14 (-35d) | 260d → 7d |  |
| 57 | 能够正常访问及获取相关商品信息 |  |  | 11d → 2d |  |
| 59 | **用户(会员)登录注册** |  |  | 56d → 7d |  |
| 60 | 基本注册 |  |  | 11d → 2d |  |
| 61 | 基本登录 |  |  | 11d → 2d |  |
| 62 | 登录状态监测 |  |  | 7d → 1d |  |
| 63 | 系统测试报告 |  | 2018-01-26 → 2017-12-22 (-35d) | 260d → 7d |  |
| 65 | **客户留言及咨询** |  | 2018-01-15 → 2017-12-27 (-19d) | 140d → 4d |  |
| 66 | 留言操作 |  |  | 8d → 1d |  |
| 67 | 与账户子系统连接 |  |  | 16d → 2d |  |
| 69 | **测试** |  | 2018-03-31 → 2017-12-27 (-94d) | 677d → 16d |  |
| 70 | 子系统测试 |  |  | 8d? → 1d? |  |
| 71 | 系统测试 |  |  | 24d → 3d |  |
| 72 | 验收测试 |  |  | 40d → 5d |  |
| 73 | 平行测试 |  |  | 32d → 4d |  |
| 74 | **维护** |  |  | 64d → 8d |  |
| 75 | 功能该进 |  |  | 30d → 4d |  |
| 76 | 功能修正 |  |  | 32d → 4d |  |

## Version 5 (saved 2017-11-04, file 小组任务进度表_v1.1.mpp)

Note of the change: change the time between the kxx and xqfx.

Last finish stays 2018-01-05.

Added:

| ID | Task | Duration | Start | Finish | Predecessors |
| --- | --- | --- | --- | --- | --- |
| 33 | **需求分析前准备任务** | 3d | 2017-11-01 | 2017-11-03 | 28 |

Changed:

| ID | Task | Start | Finish | Duration | Complete | Other |
| --- | --- | --- | --- | --- | --- | --- |
| 21 | **可行性研究** |  | 2017-11-01 → 2017-11-05 (+4d) | 11d → 14d | 100% → 76% |  |
| 28 | **可行性分析报告修订** |  | 2017-11-01 → 2017-11-05 (+4d) | 6d → 9d |  |  |
| 34 | 更新项目计划，可行性分析 | 2017-10-26 → 2017-11-01 (+6d) | 2017-10-27 → 2017-11-03 (+7d) | 2d → 3d |  | resources 陈董锴; 吕莉; 吴安之 → 吕莉; 吴安之 |
| 35 | 熟悉Python网页开发框架 |  | 2017-11-07 → 2017-11-03 (-4d) | 3d → 1d |  |  |
| 37 | **需求分析** | 2017-11-01 → 2017-11-07 (+6d) | 2017-11-15 → 2017-11-21 (+6d) |  |  |  |
| 40 | SRS修订文档 | 2017-11-01 → 2017-11-07 (+6d) | 2017-11-01 → 2017-11-07 (+6d) |  |  |  |

## Version 6 (saved 2017-11-10, file 小组任务进度表_v1.1.mpp)

Note of the change: ooo

Last finish stays 2018-01-05. Complete tasks 25 → 27.

Added:

| ID | Task | Duration | Start | Finish | Predecessors | Resources |
| --- | --- | --- | --- | --- | --- | --- |
| 9 | 10月11日小组会议 | 1d | 2017-10-11 A | 2017-10-11 A |  | 陈董锴; 吕莉; 吴安之 |
| 17 | 10月18日小组会议 | 1d | 2017-10-18 A | 2017-10-18 A |  | 陈董锴; 吕莉; 吴安之 |
| 31 | 10月25日小组会议 | 1d | 2017-10-25 | 2017-10-25 |  | 陈董锴; 吕莉; 吴安之 |
| 37 | 修改项目计划，可行性分析 | 1d? | 2017-11-01 | 2017-11-01 |  |  |
| 41 | 11月1日会议 | 1d | 2017-11-01 | 2017-11-01 |  | 陈董锴; 吕莉; 吴安之 |
| 42 | 11月7日额外长时间会议，查询资料，讨论 | 1d | 2017-11-07 | 2017-11-07 |  | 陈董锴; 吕莉; 吴安之 |
| 44 | 修订项目简介，根据新的用户目标 | 1d | 2017-11-08 | 2017-11-08 | 42 | 陈董锴 |
| 45 | 修订进度计划和项目计划以及相关PPT | 2d | 2017-11-09 | 2017-11-10 | 42 | 吴安之 |
| 46 | 提供需求分析细分步骤 | 1d | 2017-11-08 | 2017-11-08 | 42 | 吕莉 |
| 47 | ·11月10日小组会议 | 1d | 2017-11-09 | 2017-11-09 | 46 | 陈董锴; 吕莉; 吴安之 |
| 48 | 新原型设计 | 2d | 2017-11-10 | 2017-11-12 | 47 | 吴安之 |
| 49 | 根据新原型的模板来完成功能性能规定 | 1d | 2017-11-13 | 2017-11-13 | 48 | 陈董锴 |

Changed:

| ID | Task | Start | Finish | Duration | Complete | Total float | Predecessors | Other |
| --- | --- | --- | --- | --- | --- | --- | --- | --- |
| 10 | 寻找项目计划模版与后续模版 |  |  |  |  |  | none → 9 |  |
| 11 | 预先绘制甘特图 |  |  |  |  |  | none → 9 |  |
| 18 | 甘特图修订 |  |  |  |  |  | 11 → 11, 17 |  |
| 19 | 组织分解结构与工作分解结构拟定（OBS,WBS） |  |  |  |  |  | none → 17 |  |
| 20 | 项目计划修订 |  |  |  |  |  | 14 → 14, 17 |  |
| 21 | 项目logo设计 |  |  |  |  |  | 14 → 14, 17 |  |
| 23 | **可行性研究** |  | 2017-11-05 → 2017-11-10 (+5d) | 14d → 18d | 76% → 66% |  |  |  |
| 30 | **可行性分析报告修订** |  |  |  | 100% → 92% |  |  |  |
| 32 | 操作可行性分析报告更改 |  |  |  |  |  | 26 → 26, 31 |  |
| 33 | 技术可行性分析报告更改 |  |  |  |  |  | 27 → 27, 31 |  |
| 34 | 经济可行性分析报告更改 |  |  |  |  |  | 28 → 28, 31 |  |
| 36 | **需求分析前准备任务** |  | 2017-11-03 → 2017-11-07 (+4d) | 3d → 5d |  | 0d → none |  |  |
| 50 | 要求总结 | 2017-11-02 → 2017-11-13 (+11d) | 2017-11-09 → 2017-11-13 (+4d) | 6d → 1d |  |  | 30 → 48 | was named 需求说明SRS; resources 吕莉; 吴安之; 陈董锴 → 吕莉 |
| 51 | 图示绘制 | 2017-11-02 → 2017-11-13 (+11d) | 2017-11-08 → 2017-11-17 (+9d) |  |  |  | 30 → 48 | was named SRS修订 |
| 52 | SRS最终修订 |  |  |  |  |  |  | was named SRS修订文档; resources none → 陈董锴 |

## Version 7 (saved 2017-11-11, file 小组任务进度表_v1.1.mpp)

Note of the change: 5张图，可行性更新,5.2未更新。

Last finish stays 2018-01-05.

Added:

| ID | Task | Duration | Start | Finish | Predecessors | Resources |
| --- | --- | --- | --- | --- | --- | --- |
| 49 | 修订可行性分析新系统的数据处理流程 | 2d | 2017-11-12 | 2017-11-13 |  | 吴安之 |
| 50 | 用户的访谈 | 2d | 2017-11-10 | 2017-11-11 | 47 | 陈董锴 |
| 52 | 根据新的讨论系统定义功能 | 1d | 2017-11-10 | 2017-11-10 | 47 | 吕莉 |
| 53 | ER模型图示 | 1d | 2017-11-10 | 2017-11-10 | 47 | 吕莉 |
| 55 | 根据功能定义再次优化原系统 | 1d | 2017-11-13 | 2017-11-13 | 52 | 吴安之 |
| 56 | 结合已有关键信息，拟定SRS其他细节以及初稿的修订 | 2d | 2017-11-13 | 2017-11-14 | 53, 54 | 吕莉 |

Removed: 50 要求总结

Changed:

| ID | Task | Start | Finish | Duration | Predecessors | Other |
| --- | --- | --- | --- | --- | --- | --- |
| 48 | 新原型主界面及主功能体现设计 |  | 2017-11-12 → 2017-11-11 (-1d) |  |  | was named 新原型设计 |
| 51 | 根据新原型的寻找新的建议系统 | 2017-11-13 → 2017-11-10 (-3d) | 2017-11-13 → 2017-11-10 (-3d) |  | 48 → 47 | was named 根据新原型的模板来完成功能性能规定 |
| 54 | 表示系统各个层次与流程的图示绘制 | 2017-11-13 → 2017-11-10 (-3d) | 2017-11-17 → 2017-11-10 (-7d) | 5d → 1d | 48 → 47 | was named 图示绘制 |

## Version 8 (saved 2017-11-12, file 小组任务进度表_v1.1.mpp)

Note of the change: “mmp update 2017-11-12 delete ERtu”

Last finish stays 2018-01-05.

Removed: 53 ER模型图示

Changed:

| ID | Task | Predecessors |
| --- | --- | --- |
| 55 | 结合已有关键信息，拟定SRS其他细节以及初稿的修订 | ER模型图示, 53 → 53 |
